# Planificació

Schedule from MS Project, 2024-05-02 to 2024-09-04.

## Calendars

- Estándar: Mon-Fri 09:00-13:00, 15:00-19:00; Sat-Sun off.
- Alfred: Mon-Fri 08:30-13:00, 14:00-17:30; Sat-Sun off.

## Schedule

| ID | WBS | Task | Type | Duration | Start | Finish | Predecessors | Total slack | Free slack | Constraint | Calendar |
| --- | --- | --- | --- | --- | --- | --- | --- | --- | --- | --- | --- |
| 1 | 1 | **Fase Inicial projecte** |  | 19.47d | 2024-05-02 | 2024-05-29 |  | 7.03d | 0d |  | Alfred |
| 2 | 1.1 | **Acordar Projecte** |  | 7.03d | 2024-05-02 | 2024-05-13 |  | 7.03d | 0d |  | Alfred |
| 3 | 1.1.1 | Reunió anàlisis requisits |  | 6d | 2024-05-02 | 2024-05-10 |  | 7.03d | 0d |  | Alfred |
| 4 | 1.1.2 | Definir reunió de seguiment |  | 15min | 2024-05-10 | 2024-05-10 | 3 | 7.03d | 0d |  | Alfred |
| 5 | 1.1.3 | Anàlisis requisits explicació |  | 1d | 2024-05-10 | 2024-05-13 | 4 | 7.03d | 0d |  | Alfred |
| 6 | 1.2 | **Investigació** |  | 7.38d | 2024-05-13 | 2024-05-22 | 2 | 7.03d | 0d |  | Alfred |
| 7 | 1.2.1 | Buscar informació sobre AAOS |  | 5d | 2024-05-13 | 2024-05-20 | 5 | 7.03d | 0d |  | Alfred |
| 8 | 1.2.2 | Buscar els límits AAOS |  | 1d | 2024-05-20 | 2024-05-21 | 7 | 7.03d | 0d |  | Alfred |
| 9 | 1.2.3 | Exemples projectes AAOS |  | 5h | 2024-05-21 | 2024-05-21 | 8 | 7.03d | 0d |  | Alfred |
| 10 | 1.2.4 | Definir introducció i objectius documentació |  | 6h | 2024-05-21 | 2024-05-22 | 9 | 7.03d | 0d |  | Alfred |
| 11 | 1.3 | **Configuració** |  | 2.75d | 2024-05-22 | 2024-05-27 | 6 | 7.03d | 0d |  | Alfred |
| 12 | 1.3.1 | Investigar la configuració necessària |  | 2d | 2024-05-22 | 2024-05-24 | 10 | 7.03d | 0d |  | Alfred |
| 13 | 1.3.2 | Descarregar el programari |  | 6h | 2024-05-24 | 2024-05-27 | 12 | 7.03d | 0d |  | Alfred |
| 14 | 1.4 | **Configurar el programari** |  | 0.69d | 2024-05-27 | 2024-05-27 | 11 | 7.03d | 0d |  | Alfred |
| 15 | 1.4.1 | Emulador AAOS |  | 4h | 2024-05-27 | 2024-05-27 | 13 | 7.03d | 0d |  | Alfred |
| 16 | 1.4.2 | Compatibilitat |  | 1h | 2024-05-27 | 2024-05-27 | 15 | 7.03d | 0d |  | Alfred |
| 17 | 1.4.3 | provar el programari |  | 30min | 2024-05-27 | 2024-05-27 | 16 | 7.03d | 0d |  | Alfred |
| 18 | 1.5 | **Documentar el inici** |  | 1.62d | 2024-05-27 | 2024-05-29 | 14 | 7.03d | 0d |  | Alfred |
| 19 | 1.5.1 | Explicació configuració a la documentació |  | 5h | 2024-05-27 | 2024-05-28 | 17 | 7.03d | 0d |  | Alfred |
| 20 | 1.5.2 | Definir la planificació del projecte |  | 1d | 2024-05-28 | 2024-05-29 | 19 | 7.03d | 0d |  | Alfred |
| 21 | 2 | Fi fase inicial | milestone | 0d | 2024-05-29 | 2024-05-29 | 20 | 69.53d |  | finish no earlier than 2024-05-29 |  |
| 22 | 3 | **Fase Disseny** |  | 12.25d | 2024-05-29 | 2024-06-14 | 1 | 7.03d | 0d |  | Alfred |
| 23 | 3.1 | **Aplicació** |  | 12.25d | 2024-05-29 | 2024-06-14 | 18 | 7.03d | 0d |  | Alfred |
| 24 | 3.1.1 | Definir límits aplicació |  | 2d | 2024-05-29 | 2024-05-31 | 20 | 7.03d | 0d |  | Alfred |
| 25 | 3.1.2 | Definir objectiu APP |  | 6d | 2024-05-31 | 2024-06-10 | 24 | 7.03d | 0d |  | Alfred |
| 26 | 3.1.3 | Definir meta aplicació |  | 3h | 2024-06-10 | 2024-06-10 | 25 | 7.03d | 0d |  | Alfred |
| 27 | 3.1.4 | Disseny UI |  | 3d | 2024-06-10 | 2024-06-13 | 26 | 7.03d | 0d |  | Alfred |
| 28 | 3.1.5 | Aprovació | milestone | 0d | 2024-06-13 | 2024-06-13 | 27 | 7.03d | 0d |  | Alfred |
| 29 | 3.1.6 | Documentació |  | 7h | 2024-06-13 | 2024-06-14 | 28 | 7.03d | 0d |  | Alfred |
| 30 | 4 | Fi Fase Disseny | milestone | 0d | 2024-06-14 | 2024-06-14 | 29 | 57.38d |  | finish no earlier than 2024-06-14 |  |

| ID | WBS | Task | Duration | Start | Finish | Predecessors | Total slack | Free slack | Calendar |
| --- | --- | --- | --- | --- | --- | --- | --- | --- | --- |
| 31 | 5 | **Fase Programació** | 39.12d | 2024-06-14 | 2024-08-08 | 22 | 7.03d | 0d | Alfred |
| 32 | 5.1 | **Inici Sessió** | 6.38d | 2024-06-14 | 2024-06-25 | 23 | 7.03d | 0d | Alfred |
| 33 | 5.1.1 | Entendre Cognito | 2d | 2024-06-14 | 2024-06-18 | 29 | 7.03d | 0d | Alfred |
| 34 | 5.1.2 | Programar el login | 4d | 2024-06-18 | 2024-06-24 | 33 | 7.03d | 0d | Alfred |
| 35 | 5.1.3 | Documentar el login | 3h | 2024-06-24 | 2024-06-25 | 34 | 7.03d | 0d | Alfred |
| 36 | 5.2 | **API TELMA Job** | 7.25d | 2024-06-25 | 2024-07-04 | 32 | 7.03d | 0d | Alfred |
| 37 | 5.2.1 | Entendre TELMA | 1h | 2024-06-25 | 2024-06-25 | 35 | 7.03d | 0d | Alfred |
| 38 | 5.2.2 | Programar API REST TELMA | 1d | 2024-06-25 | 2024-06-26 | 37 | 7.03d | 0d | Alfred |
| 39 | 5.2.3 | Documentar TELMA | 2h | 2024-06-26 | 2024-06-26 | 38 | 7.03d | 0d | Alfred |
| 40 | 5.2.4 | **Tasks API** | 2.38d | 2024-06-26 | 2024-06-28 | 39 | 7.03d | 0d | Alfred |
| 41 | 5.2.4.1 | Entendre Tasks | 1h | 2024-06-26 | 2024-06-26 | 39 | 7.03d | 0d | Alfred |
| 42 | 5.2.4.2 | Programar API activitats Tasks | 2d | 2024-06-26 | 2024-06-28 | 41 | 7.03d | 0d | Alfred |
| 43 | 5.2.4.3 | Documentar Tasks | 2h | 2024-06-28 | 2024-06-28 | 42 | 7.03d | 0d | Alfred |
| 44 | 5.2.5 | **Test API** | 3.5d | 2024-06-28 | 2024-07-04 | 40 | 7.03d | 0d | Alfred |
| 45 | 5.2.5.1 | Entendre Test | 4h | 2024-06-28 | 2024-07-01 | 43 | 7.03d | 0d | Alfred |
| 46 | 5.2.5.2 | Programar API activitats Tasks | 2d | 2024-07-01 | 2024-07-03 | 45 | 7.03d | 0d | Alfred |
| 47 | 5.2.5.3 | Documentar Tasks | 1d | 2024-07-03 | 2024-07-04 | 46 | 7.03d | 0d | Alfred |
| 48 | 5.3 | **Tasks** | 7.75d | 2024-07-04 | 2024-07-16 | 44, 36 | 7.03d | 0d | Alfred |
| 49 | 5.3.1 | Programar estats Tasks i mostrar informació | 7d | 2024-07-04 | 2024-07-15 | 47 | 7.03d | 0d | Alfred |
| 50 | 5.3.2 | Documentar | 4h | 2024-07-15 | 2024-07-15 | 49 | 7.03d | 0d | Alfred |
| 51 | 5.3.3 | Test Tasks | 2h | 2024-07-15 | 2024-07-16 | 50 | 7.03d |  | Alfred |
| 52 | 5.4 | **Test** | 13.75d | 2024-07-16 | 2024-08-02 | 48 | 7.03d | 0d | Alfred |
| 53 | 5.4.1 | Programar gravació metadata al cloud | 13d | 2024-07-16 | 2024-08-02 | 48 | 7.03d | 0d | Alfred |
| 54 | 5.4.2 | Documentar | 4h | 2024-08-02 | 2024-08-02 | 53 | 7.03d | 0d | Alfred |
| 55 | 5.4.3 | Test Tasks | 2h | 2024-08-02 | 2024-08-02 | 54 | 7.03d | 0d | Alfred |

| ID | WBS | Task | Type | Duration | Start | Finish | Predecessors | Total slack | Free slack | Constraint | Calendar |
| --- | --- | --- | --- | --- | --- | --- | --- | --- | --- | --- | --- |
| 56 | 5.5 | **UI** |  | 4d | 2024-08-02 | 2024-08-08 | 52 | 7.03d | 0d |  | Alfred |
| 57 | 5.5.1 | Disseny bonic |  | 4d | 2024-08-02 | 2024-08-08 | 55 | 7.03d | 0d |  | Alfred |
| 58 | 6 | Fi Fase Programació | milestone | 0d | 2024-08-08 | 2024-08-08 | 57 | 8.03d | 0d |  | Alfred |
| 59 | 7 | **Fase Proves** |  | 3.88d | 2024-08-08 | 2024-08-14 | 31 | 7.03d | 0d |  | Alfred |
| 60 | 7.1 | **Aplicació** |  | 3d | 2024-08-08 | 2024-08-13 | 56 | 7.03d | 0d |  | Alfred |
| 61 | 7.1.1 | Provar Tasks |  | 1d | 2024-08-08 | 2024-08-09 | 58 | 7.03d | 0d |  | Alfred |
| 62 | 7.1.2 | Provar test |  | 1d | 2024-08-09 | 2024-08-12 | 61 | 7.03d | 0d |  | Alfred |
| 63 | 7.1.3 | Proves aplicació conjunta |  | 1d | 2024-08-12 | 2024-08-13 | 62 | 7.03d | 0d |  | Alfred |
| 64 | 7.2 | **Vehicle** |  | 0.88d | 2024-08-13 | 2024-08-14 | 60 | 7.03d | 0d |  | Alfred |
| 65 | 7.2.1 | Provar APP vehicle real |  | 4h | 2024-08-13 | 2024-08-14 | 63 | 7.03d | 0d |  | Alfred |
| 66 | 7.2.2 | Documentar resultats |  | 3h | 2024-08-14 | 2024-08-14 | 65 | 7.03d | 0d |  | Alfred |
| 67 | 8 | Fi Fase Proves | milestone | 0d | 2024-08-14 | 2024-08-14 | 66 | 8.03d | 0d |  | Alfred |
| 68 | 9 | **Fase Final** |  | 4.62d | 2024-08-14 | 2024-08-21 | 59 | 7.03d | 0d |  | Alfred |
| 69 | 9.1 | **Documentació** |  | 1.62d | 2024-08-14 | 2024-08-16 | 64 | 7.03d | 0d |  | Alfred |
| 70 | 9.1.1 | Revisar documentació |  | 3h | 2024-08-14 | 2024-08-15 | 67 | 7.03d | 0d |  | Alfred |
| 71 | 9.1.2 | Modificar documentació |  | 1d | 2024-08-15 | 2024-08-16 | 70 | 7.03d | 0d |  | Alfred |
| 72 | 9.1.3 | Finalitzar documentació |  | 2h | 2024-08-16 | 2024-08-16 | 71 | 7.03d | 0d |  | Alfred |
| 73 | 9.2 | **Aplicació** |  | 3d | 2024-08-16 | 2024-08-21 | 69 | 7.03d |  |  | Alfred |
| 74 | 9.2.1 | Revisió aplicació |  | 5h | 2024-08-16 | 2024-08-19 | 72 | 7.03d | 0d |  | Alfred |
| 75 | 9.2.2 | Modificació aplicació |  | 2d | 2024-08-19 | 2024-08-21 | 74 | 7.03d | 0d |  | Alfred |
| 76 | 9.2.3 | Finalitzar aplicació |  | 3h | 2024-08-21 | 2024-08-21 | 75 | 7.03d | 0d |  | Alfred |
| 77 | 10 | Fi Fase Final | milestone | 0d | 2024-08-21 | 2024-08-21 | 76 | 7.03d | 0d |  | Alfred |
| 78 | 11 | **Fase Entrega** |  | 6.59d | 2024-08-21 | 2024-08-30 | 68 | 3.06d |  |  | Alfred |
| 79 | 11.1 | Penjar Git App |  | 1h | 2024-08-21 | 2024-08-21 | 77 | 7.03d | 0d |  | Alfred |
| 80 | 11.2 | Reunions |  | 4h | 2024-08-21 | 2024-08-22 | 79 | 7.03d | 0d |  | Alfred |
| 81 | 11.3 | Finalitzar documentació final |  | 2d | 2024-08-22 | 2024-08-26 | 80 | 7.03d | 3.97d |  | Alfred |
| 82 | 11.4 | Entrega | milestone | 0d | 2024-08-30 | 2024-08-30 | 81 | 3d |  | finish no earlier than 2024-08-30 |  |
| 83 | 12 | Fi Fase Entrega | milestone | 0d | 2024-09-04 | 2024-09-04 | 82 | 0d |  | start no earlier than 2024-09-04 |  |
